# TP2Planificación

Schedule from MS Project, 2013-06-10 to 2013-06-21.

## Calendars

- Standard: Mon-Fri 08:00-12:00, 13:00-17:00; Sat-Sun off.

## Resources

| Resource |
| --- |
| Hernán |
| Daniel |
| Leonardo |

## Schedule

| ID | WBS | Task | Duration | Start | Finish | Predecessors | Total slack | Free slack | Resources | Work |
| --- | --- | --- | --- | --- | --- | --- | --- | --- | --- | --- |
| 1 | 1 | **Elaboración 01 - Iteración 01** | 10d | 2013-06-10 08:00 | 2013-06-21 17:00 |  | 0d |  |  | 240h |
| 2 | 1.1 | **Definición de Arquitectura** | 5d | 2013-06-10 08:00 | 2013-06-14 17:00 |  | 0.5d |  |  | 88h |
| 3 | 1.1.1 | Definición de Alternativas | 16h | 2013-06-10 08:00 | 2013-06-11 17:00 |  | 1.5d | 0d | Daniel; Hernán; Leonardo | 48h |
| 4 | 1.1.2 | Evaluación de acuerdo a atributos de calidad y prioridad | 8h | 2013-06-12 08:00 | 2013-06-12 17:00 | 3 | 1.5d | 0d | Daniel; Hernán; Leonardo | 24h |
| 5 | 1.1.3 | Documentación | 16h | 2013-06-13 08:00 | 2013-06-14 17:00 | 4 | 1.5d |  | Leonardo | 16h |
| 6 | 1.2 | **Web API** | 5.5d | 2013-06-13 08:00 | 2013-06-20 12:00 | 4 | 0.5d |  |  | 72h |
| 7 | 1.2.1 | Definición Modelo de Entidades | 12h | 2013-06-13 08:00 | 2013-06-14 12:00 |  | 1.5d | 0d | Hernán | 12h |
| 8 | 1.2.2 | Definición Interfaz | 4h | 2013-06-14 13:00 | 2013-06-14 17:00 | 7 | 1.5d |  | Hernán | 4h |
| 9 | 1.2.3 | **SerDe** | 0.5d | 2013-06-17 08:00 | 2013-06-17 12:00 | 8 | 4.5d |  |  | 8h |
| 10 | 1.2.3.1 | Deserialización Parámetros | 4h | 2013-06-17 08:00 | 2013-06-17 12:00 |  | 2.5d |  | Leonardo | 4h |
| 11 | 1.2.3.2 | Serialización Resultados | 4h | 2013-06-17 08:00 | 2013-06-17 12:00 |  | 2.5d |  | Hernán | 4h |
| 12 | 1.2.4 | **Login** | 1d | 2013-06-17 13:00 | 2013-06-18 12:00 | 7 | 3d | 0d |  | 8h |
| 13 | 1.2.4.1 | Integración con OpenID | 8h | 2013-06-17 13:00 | 2013-06-18 12:00 |  | 1d |  | Leonardo | 8h |
| 14 | 1.2.5 | **Carga de Ofertas** | 1.5d | 2013-06-17 13:00 | 2013-06-18 17:00 | 7 | 1d | 0d |  | 12h |
| 15 | 1.2.5.1 | Oferta Básica | 8h | 2013-06-17 13:00 | 2013-06-18 12:00 |  | 0.5d | 0d | Hernán | 8h |
| 16 | 1.2.5.2 | Oferta Sponsoreada | 4h | 2013-06-18 13:00 | 2013-06-18 17:00 | 15 | 0.5d |  | Hernán | 4h |
| 17 | 1.2.6 | **Consulta de Ofertas** | 2d | 2013-06-18 13:00 | 2013-06-20 12:00 | 7 | 0.5d | 0d |  | 24h |
| 18 | 1.2.6.1 | **Búsqueda Puntual** | 2d | 2013-06-18 13:00 | 2013-06-20 12:00 |  | 0.5d |  |  | 20h |
| 19 | 1.2.6.1.1 | Por Descripción | 8h | 2013-06-18 13:00 | 2013-06-19 12:00 |  | 1d |  | Leonardo | 8h |
| 20 | 1.2.6.1.2 | Por Precio | 4h | 2013-06-19 08:00 | 2013-06-19 12:00 |  | 1d |  | Hernán | 4h |
| 21 | 1.2.6.1.3 | Por Zona | 4h | 2013-06-19 13:00 | 2013-06-19 17:00 |  | 0.5d |  | Leonardo | 4h |
| 22 | 1.2.6.1.4 | Sustitutas/Relacionadas | 4h | 2013-06-20 08:00 | 2013-06-20 12:00 |  | 1d |  | Hernán | 4h |
| 23 | 1.2.6.2 | Promocionados | 4h | 2013-06-20 08:00 | 2013-06-20 12:00 |  | 1d |  | Leonardo | 4h |
| 24 | 1.2.7 | Sugerencias de usuarios | 4h | 2013-06-19 13:00 | 2013-06-19 17:00 | 7 | 0.5d | 0d | Hernán | 4h |

| ID | WBS | Task | Duration | Start | Finish | Predecessors | Total slack | Resources | Work |
| --- | --- | --- | --- | --- | --- | --- | --- | --- | --- |
| 25 | 1.3 | **Web Site TPA** | 7d | 2013-06-13 08:00 | 2013-06-21 17:00 | 4 | 0d |  | 80h |
| 26 | 1.3.1 | **Diseño de Look & Feel** | 3.5d | 2013-06-13 08:00 | 2013-06-18 12:00 |  | 0d |  | 28h |
| 27 | 1.3.1.1 | Maquetado común | 12h | 2013-06-13 08:00 | 2013-06-14 12:00 |  | 0.5d | Daniel | 12h |
| 28 | 1.3.1.2 | Estilos generales | 8h | 2013-06-14 13:00 | 2013-06-17 12:00 |  | 1d | Daniel | 8h |
| 29 | 1.3.1.3 | Imágenes comunes | 8h | 2013-06-17 13:00 | 2013-06-18 12:00 |  | 0d | Daniel | 8h |
| 30 | 1.3.2 | **Login** | 1d | 2013-06-18 13:00 | 2013-06-19 12:00 |  | 2.5d |  | 8h |
| 31 | 1.3.2.1 | Maquetado | 4h | 2013-06-18 13:00 | 2013-06-18 17:00 | 26 | 1d | Daniel | 4h |
| 32 | 1.3.2.2 | Estilos | 4h | 2013-06-19 08:00 | 2013-06-19 12:00 | 26 | 0.5d | Daniel | 4h |
| 33 | 1.3.2.3 | Integración API | 4h | 2013-06-18 13:00 | 2013-06-18 17:00 | 12 | 1d |  |  |
| 34 | 1.3.3 | **Carga de Ofertas** | 2d | 2013-06-19 13:00 | 2013-06-21 12:00 |  | 0.5d |  | 16h |
| 35 | 1.3.3.1 | Maquetado | 8h | 2013-06-19 13:00 | 2013-06-20 12:00 | 26 | 0.5d | Daniel | 8h |
| 36 | 1.3.3.2 | Estilos | 4h | 2013-06-21 08:00 | 2013-06-21 12:00 | 26 | 0.5d | Leonardo | 4h |
| 37 | 1.3.3.3 | Integración API | 4h | 2013-06-20 13:00 | 2013-06-20 17:00 | 14 | 1d | Leonardo | 4h |
| 38 | 1.3.4 | **Consulta de Ofertas** | 1d | 2013-06-20 13:00 | 2013-06-21 12:00 |  | 0.5d |  | 16h |
| 39 | 1.3.4.1 | Maquetado | 8h | 2013-06-20 13:00 | 2013-06-21 12:00 | 26 | 0.5d | Daniel | 8h |
| 40 | 1.3.4.2 | Estilos | 4h | 2013-06-21 08:00 | 2013-06-21 12:00 | 26 | 0.5d | Hernán | 4h |
| 41 | 1.3.4.3 | Integración API | 4h | 2013-06-21 08:00 | 2013-06-21 12:00 | 17 | 0.5d | Leonardo | 4h |
| 42 | 1.3.5 | **Sugerencias de usuarios** | 1.5d | 2013-06-20 13:00 | 2013-06-21 17:00 |  | 0d |  | 12h |
| 43 | 1.3.5.1 | Maquetado | 4h | 2013-06-21 13:00 | 2013-06-21 17:00 | 26 | 0d | Daniel | 4h |
| 44 | 1.3.5.2 | Estilos | 4h | 2013-06-20 13:00 | 2013-06-20 17:00 | 26 | 1d | Hernán | 4h |
| 45 | 1.3.5.3 | Integración API | 4h | 2013-06-21 08:00 | 2013-06-21 12:00 | 24 | 0.5d | Hernán | 4h |
